# ASN1 Verification

Schedule from Planner, 2019-07-15 to 2020-06-01.
Phase: Phase I

## Calendars

- Default: Mon-Fri 08:00-12:00, 13:00-17:00; Sat-Sun off.

## Resources

| Resource |
| --- |
| Eng1 |
| Eng2 |
| Eng3 |
| Intern1 |
| Intern2 |

## Schedule

| ID | WBS | Task | Start | Finish | Predecessors | Resources | Work |
| --- | --- | --- | --- | --- | --- | --- | --- |
| 1 | 1 | **Correctness of ber_check_tag** | 2019-07-15 | 2019-08-12 |  | Eng1; Eng2; Eng3 | 224h |
| 2 | 1.1 | **ber_tlv_length** | 2019-07-15 | 2019-08-12 |  |  | 224h |
| 3 | 1.1.1 | Spec | 2019-07-15 | 2019-07-23 |  |  | 56h |
| 4 | 1.1.2 | Proof | 2019-07-15 | 2019-08-12 |  |  | 168h |
| 5 | 2 | Proof automation | 2019-08-13 | 2019-08-15 | 1 | Eng1; Eng2; Eng3 | 56h |
| 6 | 3 | **Boolean decoder** | 2019-07-15 | 2019-07-23 |  | Intern1 [50%] | 64h |
| 7 | 3.1 | Spec | 2019-07-15 | 2019-07-15 |  |  | 8h |
| 8 | 3.2 | Proof | 2019-07-15 | 2019-07-23 |  |  | 56h |
| 9 | 4 | **Boolean encoder** | 2019-07-15 | 2019-07-23 |  | Intern2 [50%] | 64h |
| 10 | 4.1 | Spec | 2019-07-15 | 2019-07-15 |  |  | 8h |
| 11 | 4.2 | Proof | 2019-07-15 | 2019-07-23 |  |  | 56h |
| 12 | 5 | Roundtrip correctness Boolean | 2019-07-24 | 2019-08-01 | 9, 6 |  | 56h |
| 13 | 6 | **Primitive encoder** | 2019-07-24 | 2019-08-12 | 9 | Intern1; Intern2 | 112h |
| 14 | 6.1 | der_encode_primitive | 2019-07-24 | 2019-08-01 |  |  | 56h |
| 15 | 6.2 | der_write_tag | 2019-08-02 | 2019-08-12 | 14 |  | 56h |
| 16 | 7 | **Primitive decoder** | 2019-07-24 | 2019-08-01 | 6 | Intern1; Intern2 | 56h |
| 17 | 7.1 | ber_decode_primitive | 2019-07-24 | 2019-08-01 |  |  | 56h |
| 18 | 8 | classifying C constructs, rewriting C code | 2019-08-13 | 2019-08-21 | 1 | Eng3 | 56h |
| 19 | 9 | **Native Integer decoder** | 2019-08-13 | 2019-08-23 | 1, 16 | Intern1 | 72h |
| 20 | 9.1 | Spec | 2019-08-13 | 2019-08-14 |  |  | 16h |
| 21 | 9.2 | Proof | 2019-08-15 | 2019-08-23 | 20 |  | 56h |
| 22 | 10 | **Native Integer encoder** | 2019-08-13 | 2019-08-23 | 13 | Intern2 | 88h |
| 23 | 10.1 | Spec | 2019-08-13 | 2019-08-14 |  |  | 16h |
| 24 | 10.2 | **Proof** | 2019-08-15 | 2019-08-23 | 20 |  | 72h |
| 25 | 10.2.1 | der_encode_primitive | 2019-08-15 | 2019-08-23 | 20 |  | 56h |
| 26 | 10.2.2 | integer_compare | 2019-08-15 | 2019-08-16 |  |  | 16h |
| 27 | 11 | Roundtrip correctness Integer | 2019-08-26 | 2019-09-12 | 22, 19 |  | 112h |

| ID | WBS | Task | Start | Finish | Predecessors | Resources | Work |
| --- | --- | --- | --- | --- | --- | --- | --- |
| 28 | 12 | **Native real decoder** | 2019-09-13 | 2019-10-02 | 27 | Eng1; Eng2; Eng3; Intern1 | 448h |
| 29 | 12.1 | revision of float spec | 2019-09-13 | 2019-09-18 |  | Eng1; Intern1 | 56h |
| 30 | 12.2 | asn_double2REAL | 2019-09-13 | 2019-10-02 |  |  | 112h |
| 31 | 12.3 | asn_REAL2double | 2019-09-13 | 2019-10-02 |  |  | 112h |
| 32 | 12.4 | NativeReal_decode_ber | 2019-09-13 | 2019-09-23 |  |  | 56h |
| 33 | 12.5 | NativeReal_encode_der | 2019-09-13 | 2019-09-23 |  |  | 56h |
| 34 | 12.6 | REAL_compare | 2019-09-13 | 2019-09-23 |  |  | 56h |
| 35 | 13 | **Native real encoder** | 2019-09-13 | 2019-09-13 | 27 |  | 7.75h |
| 36 | 13.1 | NativeReal_encode_der | 2019-09-13 | 2019-09-13 |  |  | 7.75h |
| 37 | 14 | Roundtrip correctness Real | 2019-10-03 | 2019-10-31 | 35, 28 |  | 168h |
| 38 | 15 | **Octet string decoder** | 2019-11-01 | 2020-01-23 | 37 |  | 480h |
| 39 | 15.1 | OCTET_STRING_decode_ber | 2019-11-01 | 2020-01-23 |  |  | 480h |
| 40 | 16 | **Octet string encoder** | 2019-11-01 | 2019-11-11 | 37 |  | 56h |
| 41 | 16.1 | OCTET_STRING_encode_der | 2019-11-01 | 2019-11-11 |  |  | 56h |
| 42 | 17 | Roundtrip correctness Octet string | 2020-01-24 | 2020-03-05 | 39, 40 |  | 240h |
| 43 | 18 | **Time decoder** | 2020-01-24 | 2020-02-12 | 38 |  | 280h |
| 44 | 18.1 | Spec of time type | 2020-01-24 | 2020-02-12 |  |  | 112h |
| 45 | 18.2 | GeneralizedTime_compare | 2020-01-24 | 2020-02-12 |  |  | 112h |
| 46 | 18.3 | UTCTime_compare | 2020-01-24 | 2020-02-03 |  |  | 56h |
| 47 | 19 | **Time encoder** | 2019-11-12 | 2019-12-10 | 41 |  | 168h |
| 48 | 19.1 | asn_GT2time_frac | 2019-11-12 | 2019-12-10 |  |  | 168h |
| 49 | 20 | Other simple types | 2020-01-24 | 2020-02-03 | 41, 39 |  | 56h |
| 50 | 21 | **Choice decoder** | 2020-02-04 | 2020-03-03 | 49 |  | 168h |
| 51 | 21.1 | CHOICE_decode_ber | 2020-02-04 | 2020-03-03 |  |  | 168h |

| ID | WBS | Task | Start | Finish | Predecessors | Work |
| --- | --- | --- | --- | --- | --- | --- |
| 52 | 22 | **Choice encoder** | 2020-02-04 | 2020-02-17 | 49 | 80h |
| 53 | 22.1 | CHOICE_encode_der | 2020-02-04 | 2020-02-17 |  | 80h |
| 54 | 23 | Roundtrip correctness Choice | 2020-03-04 | 2020-03-23 | 53, 50 | 112h |
| 55 | 24 | **Sequence decoder** | 2020-03-24 | 2020-06-01 | 54 | 400h |
| 56 | 24.1 | SEQUENCE_decode_ber | 2020-03-24 | 2020-06-01 |  | 400h |
| 57 | 25 | **Sequence encoder** | 2020-03-24 | 2020-04-06 | 54 | 80h |
| 58 | 25.1 | SEQUENCE_encode_der | 2020-03-24 | 2020-04-06 |  | 80h |
| 59 | 26 | Roundtrip correctness Sequence | 2020-04-07 | 2020-05-05 | 58 | 168h |
| 60 | 27 | **Set_of decoder** | 2020-02-04 | 2020-02-21 | 49 | 112h |
| 61 | 27.1 | SET_OF_decode_ber | 2020-02-04 | 2020-02-21 |  | 112h |
| 62 | 28 | **Set_of encoder** | 2020-02-04 | 2020-02-12 | 49 | 112h |
| 63 | 28.1 | SET_OF_encode_der | 2020-02-04 | 2020-02-12 |  | 56h |
| 64 | 28.2 | SET_OF__encode_sorted | 2020-02-04 | 2020-02-12 |  | 56h |
